# MigrationQualité

How a schedule from GanttProject changed from version to version. A marks actual dates.

## Version 1 (saved 2020-07-08)

Note of the change: Create ProcessusQualite.gan

| ID | WBS | Task | Duration | Start | Finish | Predecessors |
| --- | --- | --- | --- | --- | --- | --- |
| 1 | 1 | **Phase#1- Read Access** | 151d | 2020-07-02 | 2021-02-01 |  |
| 2 |  | CGP-Data quality needs | 27d | 2020-07-02 | 2020-08-07 |  |
| 3 |  | Transaction model definition | 21d | 2020-09-02 | 2020-09-30 |  |
| 4 |  | Database implementation | 11d | 2020-09-07 | 2020-09-21 |  |
| 5 |  | Old DQ records migration | 11d | 2020-09-16 | 2020-09-30 |  |
| 6 |  | SOW-Creation | 19d | 2020-09-01 | 2020-09-25 |  |
| 7 |  | API developpement (Contract) | 65d | 2020-10-01 | 2020-12-31 |  |
| 8 |  | Test and PreProd | 20d | 2021-01-04 | 2021-01-29 |  |
| 9 |  | Deployment | 1d | 2021-02-01 | 2021-02-01 | 8 |
| 10 |  | OpenAPI learning and training | 46d | 2020-06-29 | 2020-09-01 |  |

## Version 2 (saved 2020-09-02)

Note of the change: Update ProcessusQualite.gan

Last finish 2021-02-01 → 2021-02-10 (+9d).

Added:

| ID | Task | Duration | Start | Finish | Predecessors | Resources |
| --- | --- | --- | --- | --- | --- | --- |
| 3 | New data quality conceptual model definition | 15d | 2020-08-17 | 2020-09-04 |  |  |
| 5 | New data quality relational DB model implementation | 5d | 2020-09-22 | 2020-09-28 | 4 |  |
| 7 | Old DQ records migration- DEV | 20d | 2020-09-29 | 2020-10-26 | 4, 5, 6 | Pascale; Nicolas [10%] |

Changed:

| ID | Task | Start | Finish | Duration | Complete | Predecessors | Other |
| --- | --- | --- | --- | --- | --- | --- | --- |
| 1 | **Phase#1- Read Access** |  | 2021-02-01 → 2021-02-10 (+9d) | 151d → 158d | 0% → 6% |  |  |
| 2 | CGP-Data quality needs |  | 2020-08-07 → 2020-08-13 (+6d) | 27d → 31d |  |  |  |
| 4 | New data quality relational DB model definition |  |  |  |  | none → 3 | was named Database implementation |
| 6 | Old DQ records migration- Analysis | 2020-09-16 → 2020-08-17 (-30d) | 2020-09-30 → 2020-09-04 (-26d) | 11d → 15d | 0% → 90% |  | was named Old DQ records migration; resources Pascale → Amanda |
| 8 | Transaction model definition | 2020-09-02 → 2020-09-21 (+19d) | 2020-09-30 → 2020-10-02 (+2d) | 21d → 10d |  |  |  |
| 9 | SOW-Creation | 2020-09-01 → 2020-09-14 (+13d) | 2020-09-25 → 2020-10-16 (+21d) | 19d → 25d |  |  |  |
| 10 | API developpement (Contract) | 2020-10-01 → 2020-11-09 (+39d) | 2020-12-31 → 2021-01-12 (+12d) | 65d → 45d |  | none → 9FS+15d |  |
| 11 | Test and PreProd | 2021-01-04 → 2021-01-13 (+9d) | 2021-01-29 → 2021-02-09 (+11d) |  |  |  |  |
| 12 | Deployment | 2021-02-01 → 2021-02-10 (+9d) | 2021-02-01 → 2021-02-10 (+9d) |  |  |  |  |

## Version 3 (saved 2020-09-02)

Note of the change: Update ProcessusQualite.gan

Last finish stays 2021-02-10.

Added:

| ID | Task | Duration | Start | Finish | Predecessors |
| --- | --- | --- | --- | --- | --- |
| 8 | Old DQ records migration- full content | 45d | 2020-10-27 | 2020-12-29 | 7 |

Changed:

| ID | Task | Complete | Other |
| --- | --- | --- | --- |
| 1 | **Phase#1- Read Access** | 6% → 5% |  |
| 7 | Old DQ records migration- minimal content |  | was named Old DQ records migration- DEV |

## Version 4 (saved 2020-09-03)

Note of the change: Update ProcessusQualite.gan

Last finish stays 2021-02-10.

Added:

| ID | Task | Duration | Start | Finish | Resources |
| --- | --- | --- | --- | --- | --- |
| 14 | SQL_Training | 13d | 2020-09-02 | 2020-09-18 | Pascale; Amanda |

Changed:

| ID | Task | Start | Finish | Duration | Other |
| --- | --- | --- | --- | --- | --- |
| 1 | **Phase#1- Read Access** | 2020-07-02 → 2020-08-17 (+46d) |  | 158d → 126d |  |
| 2 | CGP-Data quality needs | 2020-07-02 → 2020-08-25 (+54d) | 2020-08-13 → 2020-09-11 (+29d) | 31d → 14d |  |
| 3 | New data quality conceptual model definition |  | 2020-09-04 → 2020-09-11 (+7d) | 15d → 20d |  |
| 4 | New data quality relational DB model definition | 2020-09-07 → 2020-09-14 (+7d) | 2020-09-21 → 2020-09-28 (+7d) |  | resources Geoffroy → Pascale |
| 5 | New data quality relational DB model implementation | 2020-09-22 → 2020-09-29 (+7d) | 2020-09-28 → 2020-10-05 (+7d) |  |  |
| 7 | Old DQ records migration- minimal content | 2020-09-29 → 2020-10-06 (+7d) | 2020-10-26 → 2020-11-02 (+7d) |  |  |
| 8 | Old DQ records migration- full content | 2020-10-27 → 2020-11-03 (+7d) | 2020-12-29 → 2021-01-06 (+8d) |  |  |
| 9 | Transaction model definition |  | 2020-10-02 → 2020-10-16 (+14d) | 10d → 20d |  |

## Version 5 (saved 2020-09-16)

Note of the change: Update ProcessusQualite.gan

Last finish stays 2021-02-10. Complete tasks 0 → 1.

Changed:

| ID | Task | Finish | Duration | Complete |
| --- | --- | --- | --- | --- |
| 1 | **Phase#1- Read Access** |  |  | 5% → 12% |
| 3 | New data quality conceptual model definition |  |  | 0% → 100% |
| 8 | Old DQ records migration- full content | 2021-01-06 → 2021-02-10 (+35d) | 45d → 70d |  |
